# BMA -TIẾN ĐỘ THIẾT KẾ

Schedule from MS Project XML, 2025-09-15 to 2026-01-12, status date 2023-05-23.
TOAN PHAT

## Calendars

- Nicon: Mon-Sat 08:00-12:00, 13:00-17:00; Sun off.

## Resources

| Resource |
| --- |
| Nicon |

## Schedule

| ID | WBS | Task | Duration | Start | Finish | Predecessors | Total slack | Constraint |
| --- | --- | --- | --- | --- | --- | --- | --- | --- |
| 1 | 1 | **CHỦ ĐẦU TƯ PHẢN HỒI BÁO GIÁ VÀ HỢP ĐỒNG THIẾT KẾ THI CÔNG** | 2d | 2025-09-15 | 2025-09-16 |  |  |  |
| 2 | 1.1 | Chủ đầu tư phản hồi báo giá của Nicon,xem và đánh giá hợp đồng thiết kế, thi công | 2d | 2025-09-15 | 2025-09-16 |  |  | start no earlier than 2025-09-15 |
| 3 | 2 | **GIẤY ĐĂNG KÍ MÔI TRƯỜNG (CM)** | 35d | 2025-09-17 | 2025-10-27 |  | 25d |  |
| 4 | 2.1 | Lập hồ sơ đăng ký môi trường và trình phương án bảo vệ môi trường, phương án quản lý và xử lý chất thải. | 15d | 2025-09-17 | 2025-10-03 | 2 | 25d |  |
| 5 | 2.2 | Công văn tiếp nhận đang kí (không thay đổi) | 20d | 2025-10-04 | 2025-10-27 | 4 | 25d |  |
| 6 | 3 | **THIẾT KẾ DỰ THẦU** | 3d | 2025-09-15 | 2025-09-17 |  |  |  |
| 7 | 3.1 | Trình thiết kế dự thầu | 2d | 2025-09-15 | 2025-09-16 | 2FF |  |  |
| 8 | 3.2 | Thống nhất thiết kế, số liệu, chiều cao, mặt cắt, phối cảnh tổng thể | 1d | 2025-09-17 | 2025-09-17 | 7 |  |  |
| 9 | 4 | **THIẾT KẾ VÀ PHÊ DUYỆT QUY HOẠCH TỔNG MẶT BẰNG (QH CT 1/500 RÚT GỌN** | 60d | 2025-09-17 | 2025-11-25 |  | 1d |  |
| 10 | 4.1 | Khảo sát địa hình, khảo sát địa chất | 10d | 2025-09-17 | 2025-09-27 | 2 | 91d |  |
| 11 | 4.2 | Chuẩn bị hồ sơ thiết kế, pháp lý cho xin phép Quy hoạch rút gọn | 7d | 2025-09-17 | 2025-09-24 | 2 | 94d |  |
| 12 | 4.3 | Lập Quy hoạch rút gọn 1/500 | 16d | 2025-09-18 | 2025-10-06 | 8 |  |  |
| 13 | 4.4 | Kiểm tra, hoàn thành | 3d | 2025-10-07 | 2025-10-09 | 12 | 81d |  |
| 14 | 4.5 | Kí và trình hồ sơ (không đổi) | 3d | 2025-10-07 | 2025-10-09 | 12 |  |  |
| 15 | 4.6 | Các ban ngành thẩm định hồ sơ | 25d | 2025-10-10 | 2025-11-07 | 14 |  |  |
| 16 | 4.7 | Phê duyệt Quy hoạch rút gọn 1/500 | 15d | 2025-11-08 | 2025-11-25 | 15 |  |  |
| 17 | 5 | **nbtk: THIẾT KẾ CƠ SỞ / BASIC DESIGN** | 6d | 2025-09-15 | 2025-09-20 |  | 3d |  |
| 18 | 5.1 | Hoàn chỉnh bản vẽ phù hợp giữa các bộ môn | 4d | 2025-09-15 | 2025-09-18 | 7SS | 3d | start no earlier than 2023-11-18 |
| 19 | 5.2 | Chỉnh Master plan phù hợp với PCCC, Ban, KCN | 4d | 2025-09-15 | 2025-09-18 | 18SS | 3d |  |
| 20 | 5.3 | Trình và được Cđt đồng ý với thay đổi | 2d | 2025-09-19 | 2025-09-20 | 18 | 97d |  |
| 21 | 6 | **THIẾT KẾ CHI TIẾT KĨ THUẬT/ DETAIL AND TECHNICAL DESIGN** | 33d | 2025-09-19 | 2025-10-27 |  | 11d |  |
| 22 | 6.1 | Chi tiết kiến trúc | 15d | 2025-09-19 | 2025-10-06 | 18 | 84d | start no earlier than 2024-01-24 |
| 23 | 6.2 | Chi tiết kết cấu | 15d | 2025-09-19 | 2025-10-06 | 18 | 84d | start no earlier than 2024-03-09 |
| 24 | 6.3 | Chi tiết cơ khí, điện và hệ thống nước, PCCC | 15d | 2025-09-19 | 2025-10-06 | 18 | 84d | start no earlier than 2024-02-03 |
| 25 | 6.4 | Thuyết minh tính toán, spec | 15d | 2025-09-19 | 2025-10-06 | 18 | 11d | start no earlier than 2024-03-18 |
| 26 | 6.5 | Kiểm tra, hoàn thành | 4d | 2025-10-07 | 2025-10-10 | 25 | 11d |  |
| 27 | 6.6 | Trình chủ đầu tư xem và đồng ý (không đổi) | 7d | 2025-10-11 | 2025-10-18 | 26 | 11d |  |
| 28 | 6.7 | Hoàn thành, bàn giao | 7d | 2025-10-20 | 2025-10-27 | 27 | 11d |  |

| ID | WBS | Task | Duration | Start | Finish | Predecessors | Total slack |
| --- | --- | --- | --- | --- | --- | --- | --- |
| 29 | 7 | **XIN PHÉP PCCC /FIRE PROTECTION PERMIT APPLICATION** | 55d | 2025-09-19 | 2025-11-21 |  | 3d |
| 30 | 7.1 | Gởi PCCC xin ý kiến | 3d | 2025-09-19 | 2025-09-22 | 19 | 3d |
| 31 | 7.2 | Chuẩn bị hồ sơ : Kiến trúc-Kết Cấu - Phòng Cháy chữa cháy | 12d | 2025-09-23 | 2025-10-06 | 30 | 3d |
| 32 | 7.3 | Kiểm, hoàn thành | 5d | 2025-10-07 | 2025-10-11 | 31 | 3d |
| 33 | 7.4 | Nicon và Chủ đầu tư đồng ý (không đổi) | 2d | 2025-10-13 | 2025-10-14 | 32 | 3d |
| 34 | 7.5 | Kí, Trình thiết kế cho Sở cảnh sát PCCC (không đổi) | 3d | 2025-10-15 | 2025-10-17 | 33 | 3d |
| 35 | 7.6 | Sở Cảnh sát PCCC phê duyệt | 30d | 2025-10-18 | 2025-11-21 | 34 | 3d |
| 36 | 8 | **XIN PHÉP XÂY DỰNG /CONSTRUCTION PERMIT** | 66d | 2025-10-28 | 2026-01-12 |  |  |
| 37 | 8.1 | Đơn vị tư vấn thiết kế cung cấp bản vẽ ;Thẩm tra thiết kế -Kiến Trúc- Kết Cấu- MEP | 14d | 2025-10-28 | 2025-11-12 | 28 | 11d |
| 38 | 8.2 | Kí, trình nộp lên Tỉnh (không đổi) | 2d | 2025-11-26 | 2025-11-27 | 37, 5, 16, 35 |  |
| 39 | 8.3 | Thẩm định thiết kế | 21d | 2025-11-28 | 2025-12-22 | 38 |  |
| 40 | 8.4 | Giấp phép xây dựng được cấp | 15d | 2025-12-23 | 2026-01-08 | 39 |  |
| 41 | 8.5 | Bàn giao hồ sơ | 3d | 2026-01-09 | 2026-01-12 | 40 |  |
| 42 | 9 | **XIN PHÉP KCN, BAN ĐỂ SAN LẤP, ÉP CỌC** | 98d | 2025-09-17 | 2026-01-08 |  | 3d |
| 43 | 9.1 | Xin phép đấu nối, mở cổng với KCN | 10d | 2025-09-17 | 2025-09-27 | 2 | 3d |
| 44 | 9.2 | San lấp | 28d | 2025-09-29 | 2025-10-30 | 43 | 3d |
| 45 | 9.3 | ép cọc | 60d | 2025-10-31 | 2026-01-08 | 44 | 3d |
| 46 | 9.4 | thi công hàng rào | 50d | 2025-11-12 | 2026-01-08 | 45FF | 3d |
