# MMV - MATER SCHEDULE

Schedule from MS Project XML, 2024-08-15 to 2025-03-28, status date 2023-05-23.

## Calendars

- Nicon: Mon-Sat 08:00-12:00, 13:00-17:00; Sun off. Exceptions (off unless hours are given): 2024-09-02 (2/9), 2025-01-01 (Tet Duong).

## Resources

| Resource |
| --- |
| Nicon |

## Schedule

| ID | WBS | Task | Duration | Start | Finish | Predecessors | Total slack | Constraint |
| --- | --- | --- | --- | --- | --- | --- | --- | --- |
| 1 | 1 | **ADJUSTED INVESTMENT REGISTRATION CERTIFICATE/ ĐIỀU CHỈNH GIẤY CHỨNG NHẬN ĐẦU TƯ** | 40d | 2024-08-15 | 2024-10-01 |  |  |  |
| 2 | 1.1 | Receive information and prepare documents/ Tiếp nhận thông tin và soạn thảo hồ sơ (After client sign lease of land contract/ Sau khi CĐT kí lại hợp đồng thuê đất) | 5d | 2024-08-15 | 2024-08-20 |  |  | start no earlier than 2024-08-15 |
| 3 | 1.2 | Customer representative submits adjustment documents at the management board of Dong Nai Industrial Park/ Đại diện khách hàng nộp hồ sơ điều chỉnh tại ban quản lý các KCN Đồng Nai | 5d | 2024-08-21 | 2024-08-26 | 2 |  |  |
| 4 | 1.3 | Approve and hand over results/ Phê duyệt và bàn giao kết quả | 30d | 2024-08-27 | 2024-10-01 | 3 |  |  |
| 5 | 2 | **APPROVAL SHORTEN PLANNING/ PHÊ DUYỆT QUY HOẠCH RÚT GỌN** | 122d | 2024-09-07 | 2025-01-28 |  |  |  |
| 6 | 2.1 | Topographical survey work/ Khảo sát địa hình | 10d | 2024-09-07 | 2024-09-18 | 7SS | 112d |  |
| 7 | 2.2 | Making Drawings/ Lập bản vẽ Quy hoạch rút gọn | 21d | 2024-09-07 | 2024-10-01 | 4FF |  |  |
| 8 | 2.3 | Submission documents/ Trình quy hoạch rút gọn | 10d | 2024-10-02 | 2024-10-12 | 7, 3 |  |  |
| 9 | 2.4 | Appraisal board meeting/ Tổ chức họp Hội đồng thẩm định đồ án quy hoạch | 20d | 2024-10-14 | 2024-11-05 | 8 |  |  |
| 10 | 2.5 | Authority release meeting minute/ Cơ quan công bố biên bản họp Hội đồng thẩm định | 7d | 2024-11-06 | 2024-11-13 | 9 |  |  |
| 11 | 2.6 | EP Revise/ Điều chỉnh đồ án quy hoạch theo nội dung biên bản họp Hội đồng thẩm định | 14d | 2024-11-14 | 2024-11-29 | 10 |  |  |
| 12 | 2.7 | Re-submit and get approval/ Gửi lại và phê duyệt quy hoạch rút gọn | 50d | 2024-11-30 | 2025-01-28 | 11 |  |  |
| 13 | 3 | **ENVIRONMENT PERMIT/ XIN PHÉP MÔI TRƯỜNG** | 134d | 2024-08-21 | 2025-01-25 |  | 2d |  |
| 14 | 3.1 | Gather information, Writing report, Preparing the Environmental Impact Assessment (EIA) license documents/ Thu gom thông tin, Viết báo cáo, Chuẩn bị hồ sơ xin phép ĐTM | 30d | 2024-08-21 | 2024-09-25 | 2 | 2d | start no earlier than 2024-06-20 |
| 15 | 3.2 | **Submitting EIA reports/ Trình báo cáo Đánh giá tác động môi trường ĐTM** | 64d | 2024-09-26 | 2024-12-09 |  | 2d |  |
| 16 | 3.2.1 | First submiting of full documents/ Trình hồ sơ đầy đủ đầu tiên | 1d | 2024-09-26 | 2024-09-26 | 14 | 2d |  |
| 17 | 3.2.2 | Toda, Client review and comment/ Toda, CĐT xem và gởi ý kiến nhận xét | 7d | 2024-09-27 | 2024-10-04 | 16 | 2d |  |
| 18 | 3.2.3 | Final modifying if any/ Điều chỉnh lần cuối nếu có | 7d | 2024-10-05 | 2024-10-12 | 17 | 2d |  |
| 19 | 3.2.4 | Final submiting/ Trình xem lại lần cuối | 3d | 2024-10-14 | 2024-10-16 | 18 | 2d |  |
| 20 | 3.2.5 | Submitting to Client to get the sign, stamp/ Trình CĐT kí, đóng dấu | 3d | 2024-10-17 | 2024-10-19 | 19 | 2d |  |
| 21 | 3.2.6 | Sending full report to the Ministry of Naturral Resuorces & Environment (MONRE)/ Nộp báo cáo bản đầy đủ lên Bộ tài nguyên và môi trường | 3d | 2024-10-21 | 2024-10-23 | 20, 4 | 2d |  |
| 22 | 3.2.7 | MONRE hold appraisal team, Nicon & Client Join the Meeting with MONRE to explain/ Bộ tài nguyên và môi trường lập Tổ thẩm định Hồ sơ (bản đầy đủ), Đơn vị tư vấn đại diện CĐT giải trình và chỉnh sửa theo yêu cầu của Tổ thẩm định | 30d | 2024-10-24 | 2024-11-27 | 21 | 2d |  |
| 23 | 3.2.8 | Final modifying if any, Client accepts; Signing, Stamping and submitting to MONRE/ Điều chỉnh nếu có. Gửi Báo cáo cho CĐT đọc lại lần cuối, ký đóng dấu và gửi báo cáo lên HEPZA | 10d | 2024-11-28 | 2024-12-09 | 22 | 2d |  |
| 24 | 3.3 | Approved EIA reports/ Phê duyệt báo cáo Đánh giá tác động môi trường ĐTM | 40d | 2024-12-10 | 2025-01-25 | 23 | 2d |  |

| ID | WBS | Task | Duration | Start | Finish | Predecessors | Total slack | Constraint |
| --- | --- | --- | --- | --- | --- | --- | --- | --- |
| 25 | 4 | **FIRE FIGHTING PERMIT/ XIN PHÉP PCCC** | 90d | 2024-09-27 | 2025-01-10 |  | 15d |  |
| 26 | 4.1 | Receive the Fire-fighting system from Toda / Nhận Thiết kế Phòng cháy chữa cháy từ Toda (No later than 27/ 09_ không trễ hơn ngày 27/09) | 20d | 2024-09-27 | 2024-10-19 | 4FF, 20FF | 15d | start no earlier than 2024-08-15 |
| 27 | 4.2 | **Checking Technical design, Preparing to submitting: Architecture, Structure & Firefighting/ Kiểm bản vẽ thiết kế kĩ thuật; soạn hồ sơ đệ trình : Kiến trúc, Kết Cấu và PCCC** | 27d | 2024-10-21 | 2024-11-20 |  | 15d |  |
| 28 | 4.2.1 | Check FF design and note suitably/ Kiểm hồ sơ PCCC và ghi chú cho phù hợp | 14d | 2024-10-21 | 2024-11-05 | 26 | 15d | start no earlier than 2023-12-01 |
| 29 | 4.2.2 | Preparing the Arc. & Structural design and notes suitably/ Soạn hồ sơ phần xây dựng, ghi chú cho phù hợp | 14d | 2024-10-21 | 2024-11-05 | 28FF | 71d |  |
| 30 | 4.2.3 | Toda reviews and discuss comments/ Toda xem và thảo luận các góp ý | 7d | 2024-11-06 | 2024-11-13 | 28 | 64d |  |
| 31 | 4.2.4 | Toda Modify drawings and documents / Toda Sửa hồ sơ sau thảo luận | 7d | 2024-10-29 | 2024-11-05 | 28FF | 15d |  |
| 32 | 4.2.5 | Review and comment/ xem và gởi ý kiến nhận xét | 5d | 2024-11-06 | 2024-11-11 | 31 | 15d |  |
| 33 | 4.2.6 | Final submiting/ Trình xem lại lần cuối | 5d | 2024-11-12 | 2024-11-16 | 32 | 15d |  |
| 34 | 4.2.7 | Submitting to Client to get the sign, stamp, E-sign/ Trình CĐT kí, đóng dấu, kí điện tử | 3d | 2024-11-18 | 2024-11-20 | 33, 4 | 15d |  |
| 35 | 4.3 | Submitting to Department of Fire Fighting/ Trình đến cho Sở cảnh sát PCCC | 3d | 2024-11-21 | 2024-11-23 | 34 | 15d |  |
| 36 | 4.4 | Fire Fighting Department issues a Fire Fighting permit/ Sở PCCC cấp giấy phép PCCC | 40d | 2024-11-25 | 2025-01-10 | 35 | 15d |  |
| 37 | 5 | **CONSTRUCTION PERMIT/ XIN PHÉP XÂY DỰNG** | 72d | 2025-01-04 | 2025-03-28 |  |  |  |
| 38 | 5.1 | Receiving Technical design, Preparing to submitting: Architecture, Structure & MEP/ Nhận bản vẽ thiết kế kĩ thuật; soạn hồ sơ đệ trình : Kiến trúc, Kết Cấu và MEP (No later than 03/ 01/ 2025_ không trễ hơn ngày 03/01/2025) | 21d | 2025-01-04 | 2025-01-28 | 5FF, 13FF | 51d |  |
| 39 | 5.2 | Approval of Report+ Technical design/ Thẩm định Báo cáo + Hồ sơ thiết kế kỹ thuật | 30d | 2025-01-29 | 2025-03-04 | 5, 13, 4, 25 |  |  |
| 40 | 5.3 | Construction permit issued by the Industrial Zones Authority/ Giấp phép xây dựng được cấp bởi Ban quản lý KCN | 21d | 2025-03-05 | 2025-03-28 | 39 |  |  |
